# 自已工作计划1

Schedule from MS Project, 2006-10-09 to 2007-05-23, A marks actual dates.
www.ftpdown.com

## Calendars

- 标准: Mon-Fri 08:00-12:00, 13:00-17:00; Sat-Sun off. Exceptions (off unless hours are given): 2007-04-14 08:00-12:00, 13:00-17:00, 2007-04-21 08:00-12:00, 13:00-17:00, 2007-04-28 08:00-12:00, 13:00-17:00, 2007-05-19 08:00-12:00, 13:00-17:00.

## Resources

| Resource |
| --- |
| 尹笑辉 |
| 龙式荣 |
| 刘贻凤 |
| 罗维 |
| 贺灏 |
| 夏浪 |
| 谢辉 |
| 陈展平 |
| 陈百炼 |

## Schedule

| ID | WBS | Task | Duration | Start | Finish | Predecessors | Complete | Remaining | Total slack | Free slack | Constraint | Resources | Work | Actual work | Text1 |
| --- | --- | --- | --- | --- | --- | --- | --- | --- | --- | --- | --- | --- | --- | --- | --- |
| 1 | 1 | **陈展平** | 4d? | 2007-05-08 08:00 | 2007-05-11 17:00 |  |  |  | 7d |  |  | 陈展平 | 88h |  |  |
| 2 | 1.1 | 阅读三维支吊架源代码 | 1d | 2007-05-08 08:00 | 2007-05-08 17:00 |  |  |  | 8d | 0d | start no earlier than 2007-05-08 08:00 | 陈展平 | 8h |  |  |
| 3 | 1.2 | **学习PDMS11.5的工作流程,系统结构以及数据共享方面的知识,编写相关文档** | 3d? | 2007-05-09 08:00 | 2007-05-11 17:00 | 2 |  |  | 7d |  |  | 陈展平 | 48h |  |  |
| 4 | 1.2.1 | 看PDMS组的文档,主要是他们对PDMS11.5认识或研究的相关文档 | 1d? | 2007-05-09 08:00 | 2007-05-09 17:00 |  |  |  | 8d | 0d |  | 陈展平 | 8h |  |  |
| 5 | 1.2.2 | 记录PDMS做一个支吊架全过程,分析其过程编写文档/阅读PDMS用户手册支吊架部分 | 1d? | 2007-05-10 08:00 | 2007-05-10 17:00 | 4 |  |  | 8d |  |  | 陈展平 | 8h |  |  |
| 6 | 1.2.3 | 阅读PDMS用户手册中的支吊架部分 | 1d? | 2007-05-11 08:00 | 2007-05-11 17:00 |  |  |  | 7d |  | start no earlier than 2007-05-11 08:00 | 陈展平 | 8h |  |  |
| 7 | 2 | **技术支持** | 11.5d? | 2007-04-12 08:00 A | 2007-04-25 12:00 |  | 88% | 1.41d? | 20.5d |  |  |  | 45.6h | 40h |  |
| 8 | 2.1 | 解决山东阳光建议 | 0.5d | 2007-04-12 08:00 A | 2007-04-12 12:00 A |  | 100% |  |  |  |  | 陈百炼 | 4h | 4h | 技术支持 |
| 9 | 2.2 | 解决西安华瑞建议 | 0.5d | 2007-04-12 12:00 A | 2007-04-12 17:00 A |  | 100% |  |  |  |  | 陈百炼 | 4h | 4h | 技术支持 |
| 10 | 2.3 | 处理刘玉春在外问题 | 0.7d | 2007-04-16 08:00 | 2007-04-16 14:36 |  |  |  | 28.3d |  | start no earlier than 2007-04-16 08:00 | 陈百炼 | 5.6h |  |  |
| 11 | 2.4 | 出差 | 3d | 2007-04-18 08:00 A | 2007-04-20 17:00 A |  | 100% |  |  |  | start no earlier than 2007-04-18 08:00 | 陈百炼 | 24h | 24h | 技术支持 |
| 12 | 2.5 | 客户培训 | 0.5d? | 2007-04-24 08:00 A | 2007-04-24 12:00 A |  | 100% |  |  |  | start no earlier than 2007-04-24 08:00 | 陈百炼 | 4h | 4h |  |
| 13 | 2.6 | 客户培训 | 0.5d | 2007-04-25 08:00 A | 2007-04-25 12:00 A |  | 100% |  |  |  | start no earlier than 2007-04-25 08:00 | 陈百炼 | 4h | 4h |  |
| 14 | 3 | **开发** | 33d? | 2007-04-13 08:00 A | 2007-05-23 17:00 |  | 78% | 7.27d? | 0d |  |  |  | 728h | 568h |  |
| 15 | 3.1 | **AutoPSA** | 21d? | 2007-04-13 08:00 A | 2007-05-08 17:00 |  | 98% | 0.44d? | 10d |  |  |  | 384.8h | 376.8h |  |
| 16 | 3.1.1 | 解决仿CSESARII和Glif结果不同问题 | 0.1d | 2007-04-13 08:00 A | 2007-04-13 08:48 A |  | 100% |  |  |  | start no earlier than 2007-04-13 08:00 | 陈百炼 | 0.8h | 0.8h | AutoPSA |
| 17 | 3.1.2 | 查找AutoPSA埋地管道计算错误 | 2d? | 2007-05-07 08:00 A | 2007-05-08 17:00 A |  | 100% |  |  |  | finish no earlier than 2007-05-08 17:00 | 陈百炼 | 16h | 16h |  |
| 18 | 3.1.3 | 增加AutoPSA8.0中投影长输入方式兼容AutoPSA1.1 | 7d? | 2007-04-16 08:00 A | 2007-04-23 17:00 A |  | 100% |  |  |  | finish no earlier than 2007-04-23 17:00 | 龙式荣 | 56h | 56h |  |
| 19 | 3.1.4 | 熟悉CAESARII，AutoPSA7.0管道设计的具体实现过程 | 1d | 2007-04-17 08:00 A | 2007-04-17 17:00 A |  | 100% |  |  |  | start no earlier than 2007-04-17 08:00 | 龙式荣 | 8h | 8h |  |
| 20 | 3.1.5 | 了解AutoPSA8.0的数据结构 | 2d? | 2007-04-18 08:00 A | 2007-04-19 17:00 |  | 50% | 1d? | 25d |  | start no earlier than 2007-04-18 08:00 | 龙式荣 | 16h | 8h |  |
| 21 | 3.1.6 | 修改工况选择-压力负数问题 | 1d | 2007-04-25 08:00 A | 2007-04-25 17:00 A |  | 100% |  |  |  | finish no earlier than 2007-04-25 17:00 | 龙式荣 | 8h | 8h |  |
| 22 | 3.1.7 | 修改仿CAESAR计算 | 0.5d | 2007-04-26 08:00 A | 2007-04-26 12:00 A |  | 100% |  |  |  | start no earlier than 2007-04-26 08:00 | 龙式荣 | 4h | 4h |  |
| 23 | 3.1.8 | 增加单位制查看功能 | 3d? | 2007-04-28 08:00 A | 2007-05-01 17:00 A |  | 100% |  |  |  | finish no earlier than 2007-04-30 17:00 | 龙式荣 | 24h | 24h |  |
| 24 | 3.1.9 | 修改AutoPSA7.0当无法确定弯单元方向，打开文件致命错误 | 1d? | 2007-04-16 08:00 A | 2007-04-16 17:00 A |  | 100% |  |  |  | start no earlier than 2007-04-16 08:00 | 刘贻凤 | 8h | 8h |  |
| 25 | 3.1.10 | 修改AutoPSA7.0中最后一个单元长度为0时，预览视图错误 | 1d? | 2007-04-17 08:00 A | 2007-04-17 17:00 A |  | 100% |  |  |  | start no earlier than 2007-04-17 08:00 | 刘贻凤 | 8h | 8h |  |
| 26 | 3.1.11 | 修复当默认工况数为0时，应力计算出现致命错误。 | 1d | 2007-04-18 08:00 A | 2007-04-18 17:00 A |  | 100% |  |  |  | start no earlier than 2007-04-18 08:00 | 刘贻凤 | 8h | 8h |  |
| 27 | 3.1.12 | 初步学习AutoPDMS的操作 | 2d | 2007-04-19 08:00 A | 2007-04-20 17:00 A |  | 100% |  |  |  | start no earlier than 2007-04-19 08:00 | 刘贻凤 | 16h | 16h |  |
| 28 | 3.1.13 | 增加仿Glif计算时，用户可以选择弯单元弯曲半径是否包含在直单元中 | 0.5d | 2007-04-23 08:00 A | 2007-04-23 12:00 A |  | 100% |  |  |  | start no earlier than 2007-04-23 08:00 | 刘贻凤 | 4h | 4h |  |
| 29 | 3.1.14 | 修改用户提出的最后一个单元投影长全为0时，计算错误。 | 0.5d | 2007-04-23 08:00 A | 2007-04-23 12:00 A |  | 100% |  |  |  |  | 刘贻凤 | 4h | 4h |  |
| 30 | 3.1.15 | 修改仿Glif计算时写.tmp文件的写单元数据算法 | 2d? | 2007-04-24 08:00 A | 2007-04-25 17:00 A |  | 100% |  |  |  | start no earlier than 2007-04-24 08:00 | 刘贻凤 | 16h | 16h |  |
| 31 | 3.1.16 | 修改生成Glif算法文件时，约束方向判断错误问题 | 1d? | 2007-04-26 08:00 A | 2007-04-26 17:00 A |  | 100% |  |  |  | start no earlier than 2007-04-24 08:00 | 刘贻凤 | 8h | 8h |  |
| 32 | 3.1.17 | 修改打开1.1文件格式不对出现致命错误BUG | 0.5d | 2007-04-27 08:00 A | 2007-04-27 12:00 A |  | 100% |  |  |  | start no earlier than 2007-04-27 08:00 | 刘贻凤 | 4h | 4h |  |
| 33 | 3.1.18 | 刚性件之间无弯单元提示警告问题 | 1.5d | 2007-04-28 08:00 A | 2007-04-30 12:00 A |  | 100% |  |  |  | start no earlier than 2007-04-28 08:00 | 刘贻凤 | 12h | 12h |  |
| 34 | 3.1.19 | 修改动力计算后无法查看静力分析结果的问题 | 1.5d | 2007-04-28 08:00 A | 2007-04-30 12:00 A |  | 100% |  |  |  | start no earlier than 2007-04-28 08:00 | 刘贻凤 | 12h | 12h |  |
| 35 | 3.1.20 | 增加显示应力结果预览视图 | 19d? | 2007-04-16 08:00 A | 2007-05-08 17:00 A |  | 100% |  |  |  | finish no earlier than 2007-05-08 17:00 | 谢辉 | 152h | 152h |  |

| ID | WBS | Task | Type | Duration | Start | Finish | Predecessors | Complete | Remaining | Total slack | Free slack | Constraint | Resources | Work | Actual work | Text1 |
| --- | --- | --- | --- | --- | --- | --- | --- | --- | --- | --- | --- | --- | --- | --- | --- | --- |
| 36 | 3.2 | **AutoPD** |  | 31d? | 2007-04-16 08:00 A | 2007-05-23 17:00 |  | 57% | 13.48d? | 0d |  |  |  | 184h | 104h |  |
| 37 | 3.2.1 | 修改AutoPD-->AutoPSA7.0冷紧单元点号,投影值方向问题 |  | 1d? | 2007-04-21 08:00 A | 2007-04-21 17:00 A |  | 100% |  |  |  | start no earlier than 2007-04-21 08:00 | 陈百炼 | 8h | 8h |  |
| 38 | 3.2.2 | 修改西安华瑞AutoPD3.0问题 |  | 3d? | 2007-04-26 08:00 A | 2007-04-28 17:00 A |  | 100% |  |  |  | finish no earlier than 2007-04-28 17:00 | 陈百炼 | 24h | 24h |  |
| 39 | 3.2.3 | 修改AutoPD3.0中增加阀门保存信息失败问题 |  | 1d | 2007-04-16 08:00 A | 2007-04-16 17:00 A |  | 100% |  |  |  | finish no earlier than 2007-04-28 17:00 | 尹笑辉 | 8h | 8h |  |
| 40 | 3.2.4 | 修改AutoPD3.0启动界面里不能搜索AutoCAD2007的问题 |  | 1d | 2007-04-23 08:00 A | 2007-04-23 17:00 A |  | 100% |  |  |  | start no earlier than 2007-04-23 08:00 | 尹笑辉 | 8h | 8h |  |
| 41 | 3.2.5 | 修改AutoPD3.0中不能双击启动AutoCAD程序的问题 |  | 1d | 2007-04-24 08:00 A | 2007-04-24 17:00 A |  | 100% |  |  |  | start no earlier than 2007-04-24 08:00 | 尹笑辉 | 8h | 8h |  |
| 42 | 3.2.6 | 修改AutoPD3.0中删除用户自定义阀门信息失败问题 | milestone | 0d | 2007-04-28 17:00 A | 2007-04-28 17:00 A |  | 100% |  |  |  | start no earlier than 2007-04-28 08:00 | 尹笑辉 |  |  |  |
| 43 | 3.2.7 | 修改AutoPD3.0中修改用户自定义阀门信息失败问题 |  | 4d? | 2007-04-25 08:00 A | 2007-04-28 17:00 A |  | 100% |  |  |  | start no earlier than 2007-04-25 08:00 | 尹笑辉 | 32h | 32h |  |
| 44 | 3.2.8 | 修改AutoPD4.0中的对应3.0中相同问题 |  | 1d | 2007-04-29 17:00 A | 2007-04-30 17:00 A |  | 100% |  |  |  | start no earlier than 2007-04-29 08:00 | 尹笑辉 | 8h | 8h |  |
| 45 | 3.2.9 | 修改插入平焊法兰生成又线图致命错误 |  | 0.3d | 2007-04-16 08:00 | 2007-04-16 10:24 |  |  |  | 28.7d |  | start no earlier than 2007-04-16 08:00 | 罗维 | 2.4h |  |  |
| 46 | 3.2.10 | 测试PD2007 |  | 0.7d | 2007-04-16 10:24 | 2007-04-16 17:00 |  |  |  | 28d |  | finish no earlier than 2007-04-16 17:00 | 罗维 | 5.6h |  |  |
| 47 | 3.2.11 | 修改移动阀门平焊法兰没有一起移动问题 |  | 1d? | 2007-04-16 08:00 | 2007-04-16 17:00 |  |  |  | 27d | 0d | start no earlier than 2007-04-16 08:00 | 罗维 | 8h |  |  |
| 48 | 3.2.12 | 在PD2007上测试动态库table |  | 1d | 2007-04-17 08:00 | 2007-04-17 17:00 | 47 |  |  | 27d |  |  | 罗维 | 8h |  |  |
| 49 | 3.2.13 | 在PD2007上测试动态库table |  | 1d | 2007-04-23 08:00 | 2007-04-23 17:00 |  |  |  | 22d |  | start no earlier than 2007-04-23 08:00 | 罗维 | 8h |  |  |
| 50 | 3.2.14 | 修改AutoPD3.0中VsDATA中不能增加，修改阀门数据， |  | 1d | 2007-04-16 08:00 A | 2007-04-16 17:00 A |  | 100% |  |  |  | start no earlier than 2007-04-16 08:00 | 夏浪 | 8h | 8h |  |
| 51 | 3.2.15 | 修改PD2007上DATAFORMAT动态库 |  | 1d | 2007-05-16 08:00 | 2007-05-16 17:00 |  |  |  | 4d |  | start no earlier than 2007-05-16 08:00 | 夏浪 | 8h |  |  |
| 52 | 3.2.16 | 修改PD4.0中轴线编号字符无限制 |  | 0.25d | 2007-05-17 08:00 | 2007-05-17 10:00 |  |  |  | 3.75d |  | start no earlier than 2007-05-17 08:00 | 夏浪 | 2h |  |  |
| 53 | 3.2.17 | 修改PD4.0中退出菜单无响应的问题 |  | 0.25d | 2007-05-17 08:00 | 2007-05-17 10:00 |  |  |  | 3.75d |  | start no earlier than 2007-05-17 08:00 | 夏浪 | 2h |  |  |
| 54 | 3.2.18 | 修改PD4.0中绘制表格时退出的错误 |  | 0.5d | 2007-05-17 08:00 | 2007-05-17 12:00 |  |  |  | 3.5d |  | start no earlier than 2007-05-17 08:00 | 夏浪 | 4h |  |  |
| 55 | 3.2.19 | 查找PD2007中动态库错误并修改生成表格类-EXCEL材料明细表，连接数据库失败的错误 |  | 1d | 2007-05-18 08:00 | 2007-05-18 17:00 |  |  |  | 2d |  | start no earlier than 2007-05-18 08:00 | 夏浪 | 8h |  |  |
| 56 | 3.2.20 | 修改导出保温油漆数据的错误 |  | 1d | 2007-05-21 08:00 | 2007-05-21 17:00 |  |  |  | 2d |  | start no earlier than 2007-05-21 08:00 | 夏浪 | 8h |  |  |
| 57 | 3.2.21 | 修改PD2007导入某些应力分析文件出错的问题 |  | 1d | 2007-05-22 08:00 | 2007-05-22 17:00 |  |  |  | 1d |  | start no earlier than 2007-05-22 08:00 | 夏浪 | 8h |  |  |
| 58 | 3.2.22 | 修改PD4.0图层管理上的错误 |  | 1d | 2007-05-23 08:00 | 2007-05-23 17:00 |  |  |  | 0d |  | start no earlier than 2007-05-23 08:00 | 夏浪 | 8h |  |  |
| 59 | 3.3 | **AutoPDMS** |  | 24d? | 2007-04-13 08:00 A | 2007-05-11 17:00 |  | 55% | 10.9d? | 9d |  |  |  | 159.2h | 87.2h |  |
| 60 | 3.3.1 | **应力分析模块** |  | 24d? | 2007-04-13 08:00 A | 2007-05-11 17:00 |  | 26% | 17.65d? | 9d |  |  |  | 87.2h | 23.2h |  |
| 61 | 3.3.1.1 | 找出PDMS径,壁厚数据源 |  | 0.9d | 2007-04-13 08:00 A | 2007-04-13 16:12 A |  | 100% |  |  |  | start no earlier than 2007-04-13 08:00 | 陈百炼 | 7.2h | 7.2h | AutoPDMS |

| ID | WBS | Task | Duration | Start | Finish | Complete | Remaining | Total slack | Constraint | Resources | Work | Actual work | Text1 |
| --- | --- | --- | --- | --- | --- | --- | --- | --- | --- | --- | --- | --- | --- |
| 62 | 3.3.1.2 | **设计规范书的撰写** | 22.06d? | 2007-04-14 16:30 A | 2007-05-11 17:00 | 20% | 17.68d? | 9d |  |  | 80h | 16h |  |
| 63 | 3.3.1.2.1 | 搜索管系的设计 | 1.5d | 2007-04-23 13:00 A | 2007-04-24 17:00 A | 100% |  |  | finish no earlier than 2007-04-24 17:00 | 陈百炼 | 12h | 12h |  |
| 64 | 3.3.1.2.2 | 搜索管系的设计 | 0.5d? | 2007-04-25 08:00 A | 2007-04-25 12:00 A | 100% |  |  | start no earlier than 2007-04-25 08:00 | 陈百炼 | 4h | 4h |  |
| 65 | 3.3.1.2.3 | 搜索管系的设计 | 2d? | 2007-04-28 08:00 | 2007-04-30 17:00 |  |  | 18d | finish no earlier than 2007-04-30 17:00 | 陈百炼 | 16h |  |  |
| 66 | 3.3.1.2.4 | 命令注册的设计规范书的撰写 | 4d? | 2007-05-08 08:00 | 2007-05-11 17:00 |  |  | 9d | finish no earlier than 2007-05-11 17:00 | 贺灏 | 32h |  |  |
| 67 | 3.3.1.2.5 | 搜索管系的设计 | 2d? | 2007-05-09 08:00 | 2007-05-10 17:00 |  |  | 10d | finish no earlier than 2007-05-10 17:00 | 陈百炼 | 16h |  |  |
| 68 | 3.3.1.2.6 | 搜索管系的设计 | 0.06d? | 2007-04-14 16:30 | 2007-04-14 18:00 |  |  | 31d | finish no earlier than 2007-04-14 18:00 |  |  |  |  |
| 69 | 3.3.2 | **元件特性模块** | 10d? | 2007-04-18 08:00 A | 2007-04-28 17:00 | 89% | 1.11d? | 19d |  |  | 72h | 64h |  |
| 70 | 3.3.2.1 | 元件特性库数据的建立 | 1d? | 2007-04-18 08:00 A | 2007-04-18 17:00 A | 100% |  |  | finish no earlier than 2007-04-18 17:00 | 贺灏 | 8h | 8h |  |
| 71 | 3.3.2.2 | 元件特性库持久层 | 2d? | 2007-04-19 08:00 A | 2007-04-20 17:00 A | 100% |  |  | finish no earlier than 2007-04-20 17:00 | 贺灏 | 16h | 16h |  |
| 72 | 3.3.2.3 | 元件特性库需求,设计规范书的撰写 | 5d? | 2007-04-24 08:00 A | 2007-04-28 17:00 A | 100% |  |  | finish no earlier than 2007-04-28 17:00 | 贺灏 | 40h | 40h |  |
| 73 | 3.3.2.4 | 了解AutoPSA7.0文件结构 | 1d? | 2007-04-28 08:00 | 2007-04-28 17:00 |  |  | 19d | start no earlier than 2007-04-28 08:00 | 贺灏 | 8h |  |  |
| 74 | 4 | AutoPHS | 1d? | 2006-10-09 08:00 | 2006-10-09 17:00 |  |  | 166d |  |  |  |  |  |
| 75 | 5 | **管理** | 142.3d? | 2006-10-09 08:00 A | 2007-04-23 10:24 | 44% | 79.06d? | 24.7d |  |  | 14.4h | 6.4h |  |
| 76 | 5.1 | AutoPSA | 1d? | 2006-10-09 08:00 | 2006-10-09 17:00 |  |  | 166d |  | 陈百炼 | 8h |  |  |
| 77 | 5.2 | **AutoPD** | 6.3d | 2007-04-16 08:00 A | 2007-04-23 10:24 A | 100% |  |  |  |  | 6.4h | 6.4h |  |
| 78 | 5.2.1 | 辅导罗维,刘贻凤,尹笑辉，龙式荣 | 0.3d | 2007-04-16 08:00 A | 2007-04-16 10:24 A | 100% |  |  |  | 陈百炼 | 2.4h | 2.4h | AutoPD |
| 79 | 5.2.2 | 辅导尹笑辉查找插入阀门保存数据错误 | 0.2d | 2007-04-17 08:00 A | 2007-04-17 09:36 A | 100% |  |  |  | 陈百炼 | 1.6h | 1.6h | AutoPD |
| 80 | 5.2.3 | 辅导解决PD,PSA问题 | 0.3d | 2007-04-23 08:00 A | 2007-04-23 10:24 A | 100% |  |  | start no earlier than 2007-04-23 08:00 | 陈百炼 | 2.4h | 2.4h |  |
| 81 | 6 | **其它** | 0.88d? | 2007-04-14 08:30 | 2007-04-14 16:30 |  |  | 31.06d |  |  | 7h |  |  |
| 82 | 6.1 | 重新调整Project | 0.88d? | 2007-04-14 08:30 | 2007-04-14 16:30 |  |  | 31.06d | finish no earlier than 2007-04-14 16:30 | 陈百炼 | 7h |  |  |
| 83 | 7 | **安装包的制作** | 0.8d | 2007-04-17 08:00 A | 2007-04-17 15:24 A | 100% |  |  |  |  | 6.4h | 6.4h |  |
| 84 | 7.1 | 制作山东阳光，西安华瑞，西安轻工院安装包 | 0.8d | 2007-04-17 08:00 A | 2007-04-17 15:24 A | 100% |  |  |  | 陈百炼 | 6.4h | 6.4h | 安装包 |
| 85 | 8 | **会议** | 0.2d | 2007-04-23 08:00 A | 2007-04-23 09:36 A | 100% |  |  |  |  | 1.6h | 1.6h |  |
| 86 | 8.1 | **AutoPDMS** | 0.2d | 2007-04-23 08:00 A | 2007-04-23 09:36 A | 100% |  |  |  |  | 1.6h | 1.6h |  |
| 87 | 8.1.1 | PDMS开会 | 0.2d | 2007-04-23 08:00 A | 2007-04-23 09:36 A | 100% |  |  | start no earlier than 2007-04-23 08:00 | 陈百炼 | 1.6h | 1.6h |  |
